# Cronograma para implementacion Banco Diners Pago Inmediato 25Jun2020

How a schedule from MS Project changed from version to version. A marks actual dates.

## Version 1 (saved 2021-09-28, file Cronograma de Incorporación de Banco Bolivariano al servicio de ANT_28092021.mpp)

Note of the change: BIBLIOTECA RECAUDACIONES

| ID | WBS | Task | Duration | Start | Finish | Predecessors | Total float | Constraint |
| --- | --- | --- | --- | --- | --- | --- | --- | --- |
| 1 | 1 | **INCORPORACION BANCO BOLIVARIANO AL SERVICIO DE RECAUDACIONES ANT** | 59d | 2021-09-08 | 2021-12-02 |  | 0d |  |
| 2 | 1.1 | **PLANIFICACIÓN** | 19d | 2021-09-08 | 2021-10-04 |  | 40d |  |
| 3 |  | Envío de propuesta | 1d | 2021-09-08 | 2021-09-08 |  | 58d | start no earlier than 2021-09-08 |
| 4 |  | Aprobación de propuesta | 1d | 2021-09-08 | 2021-09-08 |  | 58d | start no earlier than 2021-09-08 |
| 5 |  | Reunión inicial | 1d | 2021-09-23 | 2021-09-23 |  | 35d | start no earlier than 2021-09-23 |
| 6 |  | Generación y envío de matriz de stakeholders | 1d | 2021-09-24 | 2021-09-24 | 5 | 35d |  |
| 7 | 1.1.5 | **Cronograma** | 5d | 2021-09-27 | 2021-10-01 |  | 41d |  |
| 8 |  | Generación cronograma de actividades | 2d | 2021-09-27 | 2021-09-28 | 6 | 41d |  |
| 9 |  | Envio de Cronograma de Actividades | 1d | 2021-09-29 | 2021-09-29 | 8 | 41d |  |
| 10 |  | Aceptación del cronograma de Actividades | 2d | 2021-09-30 | 2021-10-01 | 9 | 41d |  |
| 11 | 1.1.6 | **Requerimiento Funcional** | 5d | 2021-09-24 | 2021-09-30 |  | 35d |  |
| 12 |  | Generación y envío de Requerimiento Funcional | 3d | 2021-09-24 | 2021-09-28 | 6SS | 35d | finish no earlier than 2021-04-06 |
| 13 |  | Aprobación del Requerimiento Funcional | 2d | 2021-09-29 | 2021-09-30 | 12 | 35d |  |
| 14 | 1.1.7 | **Solicitud de Cambios** | 2d | 2021-10-01 | 2021-10-04 |  | 35d |  |
| 15 |  | Preparar Documentación | 1d | 2021-10-01 | 2021-10-01 | 13 | 35d | start no earlier than 2020-07-07 |
| 16 |  | Aprobación de Control de Cambios | 1d | 2021-10-04 | 2021-10-04 | 15 | 35d |  |
| 17 | 1.2 | **EJECUCIÓN** | 24d | 2021-10-01 | 2021-11-08 |  | 0d |  |
| 18 | 1.2.1 | **BANCO BOLIVARIANO** | 15d | 2021-10-01 | 2021-10-22 |  | 0d |  |
| 19 | 1.2.1.1 | **Desarrollo Banco Bolivariano** | 15d | 2021-10-01 | 2021-10-22 |  | 0d |  |
| 20 |  | Desarrollo de canales Banco Bolivariano | 15d | 2021-10-01 | 2021-10-22 |  | 0d | start no earlier than 2021-10-01 |
| 21 | 1.2.2 | **Banred** | 14d | 2021-10-05 | 2021-10-25 |  | 11d |  |
| 22 |  | DISEÑO | 1d | 2021-10-05 | 2021-10-05 | 16 | 35d | start no earlier than 2021-01-04 |
| 23 |  | Presentación de diseño | 1d | 2021-10-05 | 2021-10-05 | 22SS | 39d |  |
| 24 |  | Aprobación de diseño | 1d | 2021-10-05 | 2021-10-05 | 22SS | 35d |  |
| 25 |  | Desarrollo BANRED | 3d | 2021-10-06 | 2021-10-11 | 24 | 35d |  |
| 26 |  | Diseño de Certificación de Calidad | 1d | 2021-10-12 | 2021-10-12 | 25 | 35d | start no earlier than 2020-07-23 |
| 27 |  | Permisos de conectividad | 2d | 2021-10-21 | 2021-10-22 | 20FF | 0d |  |
| 28 |  | Pruebas de Conectividad | 1d | 2021-10-25 | 2021-10-25 | 27 | 0d |  |
| 29 | 1.2.3 | **Pruebas Técnicas** | 8d | 2021-10-26 | 2021-11-08 |  | 0d |  |
| 30 |  | Pruebas técnicas | 8d | 2021-10-26 | 2021-11-08 | 28 | 0d |  |
| 31 | 1.2.3.2 | **Proceso de conciliación** | 8d | 2021-10-26 | 2021-11-08 |  | 0d |  |
| 32 |  | Proceso batch | 8d | 2021-10-26 | 2021-11-08 | 30FF | 0d |  |
| 33 |  | Aprobación conciliación | 1d | 2021-11-08 | 2021-11-08 | 32FF | 18d |  |
| 34 |  | Preparacion de Documentacion previa a QA | 1d | 2021-11-08 | 2021-11-08 | 32FF | 0d |  |
| 35 | 1.3 | **CERTIFICACIÓN** | 47d | 2021-09-15 | 2021-11-23 |  | 7d |  |
| 36 | 1.3.1 | **Certificación de Calidad** | 45d | 2021-09-15 | 2021-11-19 |  | 9d |  |
| 37 |  | Revisión documentación versionamiento | 1d | 2021-11-09 | 2021-11-09 | 34 | 0d | start no earlier than 2020-07-30 |
| 38 |  | Versionamiento | 1d | 2021-11-10 | 2021-11-10 | 37 | 0d |  |
| 39 |  | Ejecución de guión de pruebas | 7d | 2021-11-11 | 2021-11-19 | 38 | 0d |  |
| 40 |  | Entrega a producción | 1d | 2021-09-15 | 2021-09-15 |  | 53d | start no earlier than 2021-09-15 |
| 41 | 1.3.2 | **Certificación Operaciones** | 9d | 2021-11-11 | 2021-11-23 |  | 0d |  |
| 42 |  | Certificacion Operaciones | 7d | 2021-11-11 | 2021-11-19 | 39FF | 0d |  |
| 43 |  | Certificación conciliación ANT (Creación buzón SFTP) | 2d | 2021-11-22 | 2021-11-23 | 42 | 7d |  |
| 44 |  | Aprobacion Banco BOLIVARIANO | 1d | 2021-11-22 | 2021-11-22 | 42 | 0d |  |
| 45 |  | Aprobación de ANT | 1d | 2021-11-23 | 2021-11-23 | 44 | 7d |  |
| 46 | 1.4 | **IMPLEMENTACIÓN Y CIERRE** | 8d | 2021-11-23 | 2021-12-02 |  | 0d |  |
| 47 |  | Generación documentación pase a producción. | 1d | 2021-11-23 | 2021-11-23 | 44 | 0d |  |
| 48 |  | Aprobación pase a producción | 2d | 2021-11-24 | 2021-11-25 | 47 | 0d |  |
| 49 | 1.4.3 | **Versionamiento en producción** | 6d | 2021-11-25 | 2021-12-02 |  | 0d |  |
| 50 |  | Liberación a Producción | 1d | 2021-11-25 | 2021-11-25 | 48FF | 0d |  |
| 51 |  | Seguimiento Post producción | 5d | 2021-11-26 | 2021-12-02 | 50 | 0d |  |

## Version 2 (saved 2021-10-22, file Cronograma de Incorporación de Banco Bolivariano al servicio de ANT_19102021.mpp)

Note of the change: BIBLIOTECA RECAUDACIONES

Last finish 2021-12-02 → 2022-03-22 (+110d). Complete tasks 0 → 7.

Added:

| ID | Task | Duration | Start | Finish | Predecessors | Constraint | Resources |
| --- | --- | --- | --- | --- | --- | --- | --- |
| 20 | Diseño e Infraestructura | 5d | 2021-11-22 | 2021-11-26 |  | finish no earlier than 2021-11-26 | BANCO BOLIVARIANO |
| 21 | Ajuste microservicio OTC | 5d | 2021-11-29 | 2021-12-03 | 20 | finish no earlier than 2021-12-03 | BANCO BOLIVARIANO |
| 22 | Desarrollo servicio que conecta a Banred | 18d | 2021-12-06 | 2021-12-30 | 21 | finish no earlier than 2021-12-30 | BANCO BOLIVARIANO |
| 23 | Desarrollo programas backend | 10d | 2022-01-03 | 2022-01-14 | 22 | finish no earlier than 2022-01-14 | BANCO BOLIVARIANO |
| 24 | Ajustes canal 24online | 5d | 2022-01-17 | 2022-01-21 | 23 | finish no earlier than 2022-01-21 | BANCO BOLIVARIANO |
| 25 | Pruebas ténicas | 5d | 2022-01-24 | 2022-01-28 | 24 | finish no earlier than 2022-01-28 | BANCO BOLIVARIANO |

Changed:

| ID | Task | Start | Finish | Duration | Complete | Total float | Predecessors | Other |
| --- | --- | --- | --- | --- | --- | --- | --- | --- |
| 1 | **INCORPORACION BANCO BOLIVARIANO AL SERVICIO DE RECAUDACIONES ANT** | 2021-09-08 A | 2021-12-02 → 2022-03-22 (+110d) | 59d → 134d | 0% → 16% |  |  |  |
| 2 | **PLANIFICACIÓN** | 2021-09-08 A | 2021-10-04 → 2021-10-22 (+18d) | 19d → 32d | 0% → 60% | 40d → 102d |  |  |
| 3 | Envío de propuesta | 2021-09-08 A | 2021-09-08 A |  | 0% → 100% | 58d → none |  |  |
| 4 | Aprobación de propuesta | 2021-09-08 A | 2021-09-08 A |  | 0% → 100% | 58d → none |  |  |
| 5 | Reunión inicial | 2021-09-23 A | 2021-09-23 A |  | 0% → 100% | 35d → none |  |  |
| 6 | Generación y envío de matriz de stakeholders | 2021-09-24 A | 2021-09-24 A |  | 0% → 100% | 35d → none |  |  |
| 7 | **Cronograma** | 2021-09-27 A | 2021-10-01 → 2021-10-21 (+20d) | 5d → 18d | 0% → 58% | 41d → 103d |  |  |
| 8 | Generación cronograma de actividades | 2021-09-27 A | 2021-09-28 A |  | 0% → 100% | 41d → none |  |  |
| 9 | Envio de Cronograma de Actividades | 2021-09-29 A | 2021-09-29 A |  | 0% → 100% | 41d → none |  |  |
| 10 | Aceptación del cronograma de Actividades | 2021-09-30 A | 2021-10-01 → 2021-10-21 (+20d) | 2d → 15d | 0% → 50% | 41d → 103d |  |  |
| 11 | **Requerimiento Funcional** | 2021-09-24 A | 2021-09-30 → 2021-10-20 (+20d) | 5d → 18d | 0% → 58% | 35d → 97d |  |  |
| 12 | Generación y envío de Requerimiento Funcional | 2021-09-24 A | 2021-09-28 A |  | 0% → 100% | 35d → none |  |  |
| 13 | Aprobación del Requerimiento Funcional | 2021-09-29 A | 2021-09-30 → 2021-10-20 (+20d) | 2d → 15d | 0% → 50% | 35d → 97d |  |  |
| 14 | **Solicitud de Cambios** | 2021-10-01 → 2021-10-21 (+20d) | 2021-10-04 → 2021-10-22 (+18d) |  |  | 35d → 97d |  |  |
| 15 | Preparar Documentación | 2021-10-01 → 2021-10-21 (+20d) | 2021-10-01 → 2021-10-21 (+20d) |  |  | 35d → 97d |  |  |
| 16 | Aprobación de Control de Cambios | 2021-10-04 → 2021-10-22 (+18d) | 2021-10-04 → 2021-10-22 (+18d) |  |  | 35d → 97d |  |  |
| 17 | **EJECUCIÓN** | 2021-10-01 → 2021-10-25 (+24d) | 2021-11-08 → 2022-02-24 (+108d) | 24d → 84d |  | 0d → 17d |  |  |
| 18 | **BANCO BOLIVARIANO** | 2021-10-01 → 2021-11-22 (+52d) | 2021-10-22 → 2022-02-11 (+112d) | 15d → 58d |  |  |  |  |
| 19 | **Desarrollo Banco Bolivariano** | 2021-10-01 → 2021-11-22 (+52d) | 2021-10-22 → 2022-02-11 (+112d) | 15d → 58d |  |  |  |  |
| 26 | Pruebas funcionales y de certificación | 2021-10-01 → 2022-01-31 (+122d) | 2021-10-22 → 2022-02-11 (+112d) | 15d → 10d |  |  | none → 25 | was named Desarrollo de canales Banco Bolivariano; constraint start no earlier than 2021-10-01 → finish no earlier than 2022-02-11 |
| 27 | **Banred** | 2021-10-05 → 2021-10-25 (+20d) | 2021-10-25 → 2022-02-14 (+112d) | 14d → 76d |  | 11d → 26d |  |  |
| 28 | DISEÑO | 2021-10-05 → 2021-10-25 (+20d) | 2021-10-05 → 2021-10-25 (+20d) |  |  | 35d → 97d |  |  |
| 29 | Presentación de diseño | 2021-10-05 → 2021-10-25 (+20d) | 2021-10-05 → 2021-10-25 (+20d) |  |  | 39d → 101d |  |  |
| 30 | Aprobación de diseño | 2021-10-05 → 2021-10-25 (+20d) | 2021-10-05 → 2021-10-25 (+20d) |  |  | 35d → 97d |  |  |
| 31 | Desarrollo BANRED | 2021-10-06 → 2021-10-26 (+20d) | 2021-10-11 → 2021-10-28 (+17d) |  |  | 35d → 97d |  |  |
| 32 | Diseño de Certificación de Calidad | 2021-10-12 → 2021-10-29 (+17d) | 2021-10-12 → 2021-10-29 (+17d) |  |  | 35d → 97d |  |  |
| 33 | Permisos de conectividad | 2021-10-21 → 2022-02-10 (+112d) | 2021-10-22 → 2022-02-11 (+112d) |  |  |  |  |  |
| 34 | Pruebas de Conectividad | 2021-10-25 → 2022-02-14 (+112d) | 2021-10-25 → 2022-02-14 (+112d) |  |  |  |  |  |
| 35 | **Pruebas Técnicas** | 2021-10-26 → 2022-02-15 (+112d) | 2021-11-08 → 2022-02-24 (+108d) |  |  |  |  |  |
| 36 | Pruebas técnicas | 2021-10-26 → 2022-02-15 (+112d) | 2021-11-08 → 2022-02-24 (+108d) |  |  |  |  |  |
| 37 | **Proceso de conciliación** | 2021-10-26 → 2022-02-15 (+112d) | 2021-11-08 → 2022-02-24 (+108d) |  |  |  |  |  |
| 38 | Proceso batch | 2021-10-26 → 2022-02-15 (+112d) | 2021-11-08 → 2022-02-24 (+108d) |  |  |  |  |  |
| 39 | Aprobación conciliación | 2021-11-08 → 2022-02-24 (+108d) | 2021-11-08 → 2022-02-24 (+108d) |  |  |  |  |  |
| 40 | Preparacion de Documentacion previa a QA | 2021-11-08 → 2022-02-24 (+108d) | 2021-11-08 → 2022-02-24 (+108d) |  |  |  |  |  |
| 41 | **CERTIFICACIÓN** |  | 2021-11-23 → 2022-03-11 (+108d) | 47d → 122d |  |  |  |  |
| 42 | **Certificación de Calidad** |  | 2021-11-19 → 2022-03-09 (+110d) | 45d → 120d |  |  |  |  |
| 43 | Revisión documentación versionamiento | 2021-11-09 → 2022-02-25 (+108d) | 2021-11-09 → 2022-02-25 (+108d) |  |  |  |  |  |
| 44 | Versionamiento | 2021-11-10 → 2022-02-28 (+110d) | 2021-11-10 → 2022-02-28 (+110d) |  |  |  |  |  |
| 45 | Ejecución de guión de pruebas | 2021-11-11 → 2022-03-01 (+110d) | 2021-11-19 → 2022-03-09 (+110d) |  |  |  |  |  |
| 47 | **Certificación Operaciones** | 2021-11-11 → 2022-03-01 (+110d) | 2021-11-23 → 2022-03-11 (+108d) |  |  |  |  |  |
| 48 | Certificacion Operaciones | 2021-11-11 → 2022-03-01 (+110d) | 2021-11-19 → 2022-03-09 (+110d) |  |  |  |  |  |
| 49 | Certificación conciliación ANT (Creación buzón SFTP) | 2021-11-22 → 2022-03-10 (+108d) | 2021-11-23 → 2022-03-11 (+108d) |  |  |  |  |  |
| 50 | Aprobacion Banco BOLIVARIANO | 2021-11-22 → 2022-03-10 (+108d) | 2021-11-22 → 2022-03-10 (+108d) |  |  |  |  |  |
| 51 | Aprobación de ANT | 2021-11-23 → 2022-03-11 (+108d) | 2021-11-23 → 2022-03-11 (+108d) |  |  |  |  |  |
| 52 | **IMPLEMENTACIÓN Y CIERRE** | 2021-11-23 → 2022-03-11 (+108d) | 2021-12-02 → 2022-03-22 (+110d) |  |  |  |  |  |
| 53 | Generación documentación pase a producción. | 2021-11-23 → 2022-03-11 (+108d) | 2021-11-23 → 2022-03-11 (+108d) |  |  |  |  |  |
| 54 | Aprobación pase a producción | 2021-11-24 → 2022-03-14 (+110d) | 2021-11-25 → 2022-03-15 (+110d) |  |  |  |  |  |
| 55 | **Versionamiento en producción** | 2021-11-25 → 2022-03-15 (+110d) | 2021-12-02 → 2022-03-22 (+110d) |  |  |  |  |  |
| 56 | Liberación a Producción | 2021-11-25 → 2022-03-15 (+110d) | 2021-11-25 → 2022-03-15 (+110d) |  |  |  |  |  |
| 57 | Seguimiento Post producción | 2021-11-26 → 2022-03-16 (+110d) | 2021-12-02 → 2022-03-22 (+110d) |  |  |  |  |  |
